# Project.Hind

How a schedule from MS Project changed from version to version. A marks actual dates.

## Version 1 (saved 2013-05-03)

Note of the change: Signed-off-by: Hind LAB <hind_lab@hotmail.fr>

| ID | WBS | Task | Duration | Start | Finish | Predecessors | Total float |
| --- | --- | --- | --- | --- | --- | --- | --- |
| 1 | 1 | **Total Proyecto** | 660d | 2013-03-22 | 2015-10-02 |  |  |
| 2 | 1.1 | **Fase 1: PREPARACION PARA LA FORMULACION** | 31d | 2013-03-22 | 2013-05-03 |  |  |
| 3 |  | INICIO | 0d | 2013-03-22 | 2013-03-22 |  |  |
| 4 |  | TERMINOS DE REFERENCIA. Objetivos. Condicionantes del Promotor | 4d | 2013-03-22 | 2013-03-27 | 3 |  |
| 5 |  | FINANCIACION | 3d | 2013-03-28 | 2013-03-31 | 3 |  |
| 6 |  | COMITÉ DE COORDINACION. Constitución y organización | 3d | 2013-04-01 | 2013-04-03 | 3 |  |
| 7 |  | EQUIPO DE FORMULACION. Recursos humanos y técnicos | 7d | 2013-04-04 | 2013-04-12 | 6 |  |
| 8 |  | METODOLOGIA Y PLAN DE TRABAJO | 5d | 2013-04-15 | 2013-04-19 | 7 | 7d |
| 9 |  | DOC. Nº1: Fin P.F. | 3d | 2013-04-20 | 2013-04-23 | 8 |  |
| 10 |  | Entrega al PROMOTOR. Doc. nº1 | 0d | 2013-06-04 | 2013-06-04 | 9 |  |
| 11 |  | SEMINARIO DE LANZAMIENTO DEL PROYECTO | 1d | 2013-06-04 | 2013-06-04 | 10 | -23d |
| 12 | 1.2 | **FASE 2: ANALISIS Y DIAGNOSTICO** | 94d | 2013-05-03 | 2013-09-11 |  |  |
| 13 | 1.2.1 | **ANALISIS ANTECEDENTES** | 10d | 2013-05-03 | 2013-05-16 | 11 |  |
| 14 |  | POLITICAS Y PROGRAMAS | 10d | 2013-06-05 | 2013-06-18 | 11 | -23d |
| 15 |  | MARCO LEGAL | 15d | 2013-06-07 | 2013-06-27 | 11 |  |
| 16 |  | BASES DE DATOS EXISTENTES | 7d | 2013-06-28 | 2013-07-08 | 11 |  |
| 17 | 1.2.2 | **ANALISIS DEL AREA DEL PROYECTO** | 40d | 2013-07-09 | 2013-09-02 | 16, 11 |  |
| 18 |  | ANALISIS DE RECURSOS NATURALES. INVENTARIO AMBIENTAL | 35d | 2013-10-29 | 2013-12-16 |  |  |
| 19 |  | INFRAESTRUCTURAS Y SERVICIOS | 20d | 2013-12-17 | 2014-01-13 | 18 |  |
| 20 |  | ANALISIS DE SECTORES PRODUCTIVOS | 25d | 2014-01-14 | 2014-02-17 | 19, 14, 13, 15 |  |
| 21 |  | ANALISIS POBLACIONAL | 20d | 2014-06-27 | 2014-07-24 |  |  |
| 22 |  | SISTEMA GENERAL TERRITORIAL DE INFORMACION | 21d | 2014-07-25 | 2014-08-22 | 16 |  |
| 23 | 1.2.3 | **ANALISIS DE AGENTES Y PARTICIPACION** | 44d | 2014-08-23 | 2014-10-22 |  |  |
| 24 |  | IDENTIFICACIÓN DE AGENTES Y TIPOLOGIA | 10d | 2014-12-16 | 2014-12-29 |  |  |
| 25 |  | ANALISIS DE LA PARTICIPACIÓN: ENCUESTA CON LOS AGENTES | 60d | 2014-12-31 | 2015-03-24 | 24 |  |
| 26 |  | TALLER DE PARTICIPACIÓN AGENTES PUBLICOS | 1d | 2015-03-26 | 2015-03-26 |  |  |
| 27 |  | ANALISIS PROSPECTIVO SIN | 6d | 2015-03-27 | 2015-04-03 | 26 |  |
| 28 |  | INFORME DE PARTICIPACION: Problemas, necesidades, oportunidades | 10d | 2015-04-06 | 2015-04-17 | 27, 25 |  |
| 29 |  | PRESENTACIÓN Y VALIDACION DE CONCLUSIONES | 2d | 2015-04-20 | 2015-04-21 | 28 |  |
| 30 |  | CONCLUSIONES Y Doc. Nº2. Presentación al PROMOTOR | 0d | 2015-04-22 | 2015-04-22 | 29 |  |
| 31 |  | Doc. nº2. REVISIÓN POR EL PROMOTOR | 0d | 2015-04-22 | 2015-04-22 | 30, 29 |  |
| 32 | 1.3 | **FASE 3: DISEÑO DEL PROYECTO** | 92d | 2015-04-22 | 2015-08-27 |  | 0d |
| 33 |  | OBJETIVOS Y METAS | 1d | 2015-04-22 | 2015-04-22 | 31 |  |
| 34 |  | ALTERNATIVA ESTRATEGICAS: ANÁLISIS Y SELECCIÓN | 7d | 2015-04-23 | 2015-05-01 | 33 |  |
| 35 |  | FORMULACION DE LOS COMPONENTES | 60d | 2015-05-04 | 2015-07-24 | 34 |  |
| 36 |  | DISEÑO DE LA ORGANIZACIÓN | 10d | 2015-07-27 | 2015-08-07 | 35 |  |
| 37 |  | SISTEMA DE SEGUIMIENTO Y EVALUACION. Programación de la ejecución. | 7d | 2015-08-10 | 2015-08-18 | 36, 35 |  |
| 38 |  | PRESUPUESTACION | 4d | 2015-08-10 | 2015-08-13 | 35, 36 |  |
| 39 |  | Doc. Nº 3. Entrega al PROMOTOR | 0d | 2015-08-14 | 2015-08-14 | 38 |  |
| 40 |  | Doc. Nº 3. REVISION POR EL PROMOTOR | 10d | 2015-08-14 | 2015-08-27 | 39 |  |
| 41 | 1.4 | **FASE 4: EVALUACION MULTICRITERIO** | 15d | 2015-08-28 | 2015-09-17 |  | 0d |
| 42 |  | EVALUACION ECONOMICO-FINANCIERA | 10d | 2015-08-28 | 2015-09-10 | 40 |  |
| 43 |  | EVALUACION SOCIAL Y CULTURAL | 10d | 2015-08-28 | 2015-09-10 | 40 |  |
| 44 |  | EVALUACION AMBIENTAL | 10d | 2015-08-28 | 2015-09-10 | 40 |  |
| 45 |  | EVALUACION DE RIESGOS, SEGURIDAD Y SALUD DEL PROYECTO | 10d | 2015-08-28 | 2015-09-10 | 40 |  |
| 46 |  | Entrega Doc. nº 4. VIABILIDAD Y SOSTENIBLIDAD | 0d | 2015-09-11 | 2015-09-11 | 45 |  |
| 47 |  | Revisión Doc. nº 4 | 5d | 2015-09-11 | 2015-09-17 | 42, 43, 44 |  |
| 48 | 1.5 | **FASE 5: DOCUMENTACION** | 10d | 2015-09-18 | 2015-10-02 |  | 0d |
| 49 |  | MEMORIA | 6d | 2015-09-18 | 2015-09-25 | 47 |  |
| 50 |  | ANEJOS A LA MEMORIA | 10d | 2015-09-18 | 2015-10-01 | 47 |  |
| 51 |  | PLANOS | 10d | 2015-09-18 | 2015-10-01 | 47 |  |
| 52 |  | PLIEGO DE CONDICIONES | 3d | 2015-09-18 | 2015-09-22 | 47 |  |
| 53 |  | PRESUPUESTO | 3d | 2015-09-18 | 2015-09-22 | 47 |  |
| 54 |  | ESTUDIO DE SEGURIDAD Y SALUD | 10d | 2015-09-18 | 2015-10-01 | 47 |  |
| 55 |  | Entrega del proyecto | 0d | 2015-10-02 | 2015-10-02 | 54, 49, 50, 51, 52, 53 |  |

## Version 2 (saved 2013-05-03)

Note of the change: Signed-off-by: Hind LAB <hind_lab@hotmail.fr>

Last finish 2015-10-02 → 2014-03-18 (-563d).

Added:

| ID | Task | Duration | Start | Finish |
| --- | --- | --- | --- | --- |
| 48 | **FAE 5: DOCUMENTACION** | 10d | 2014-02-27 | 2014-03-12 |

Removed: 48 FASE 5: DOCUMENTACION

Changed:

| ID | Task | Start | Finish | Duration | Total float | Predecessors | Other |
| --- | --- | --- | --- | --- | --- | --- | --- |
| 1 | **TOTAL PROYECTO** | 2013-03-22 → 2013-04-15 (+24d) | 2015-10-02 → 2014-03-18 (-563d) | 660d → 242d |  |  | was named Total Proyecto |
| 2 | **FASE 1: PREPARACION PARA LA FORMULACION** | 2013-03-22 → 2013-04-15 (+24d) | 2013-05-03 → 2013-05-27 (+24d) |  |  |  | was named Fase 1: PREPARACION PARA LA FORMULACION |
| 3 | INICIO | 2013-03-22 → 2013-04-15 (+24d) | 2013-03-22 → 2013-04-15 (+24d) |  |  |  |  |
| 4 | TERMINOS DE REFERENCIA. Objetivos. Condicionantes del Promotor | 2013-03-22 → 2013-04-15 (+24d) | 2013-03-27 → 2013-04-26 (+30d) | 4d → 10d |  |  | resources SOCIOLOGO [25%]; INGENIERO EN MEDIO AMBIENTE [25%]; INGENIERO AGRONOMO [25%]; ECONOMISTA [50%]; DIRECTOR PROYECTO [15%] → DIRECTOR PROYECTO [25%]; INGENIERO AGRONOMO [25%]; SOCIOLOGO [25%]; INGENIERO EN MEDIOAMBIENTE [25%]; ECONOMISTA [50%] |
| 5 | FINANCIACION | 2013-03-28 → 2013-04-15 (+18d) | 2013-03-31 → 2013-04-23 (+23d) | 3d → 7d |  |  | resources DIRECTOR PROYECTO [15%]; ECONOMISTA [50%]; INGENIERO AGRONOMO [25%]; SOCIOLOGO [25%] → DIRECTOR PROYECTO [15%]; INGENIERO AGRONOMO [25%]; ECONOMISTA [50%]; SOCIOLOGO [25%] |
| 6 | COMITÉ DE COORDINACION. Constitución y organización | 2013-04-01 → 2013-04-15 (+14d) | 2013-04-03 → 2013-04-19 (+16d) | 3d → 5d |  |  |  |
| 7 | EQUIPO DE FORMULACION. Recursos humanos y técnicos | 2013-04-04 → 2013-04-22 (+18d) | 2013-04-12 → 2013-05-10 (+28d) | 7d → 15d |  | 6 → 4SS, 6 | resources ADMINISTRATIVO [10%]; DIRECTOR PROYECTO [25%]; ECONOMISTA [20%]; SOCIOLOGO [10%]; INGENIERO EN MEDIO AMBIENTE [10%]; INGENIERO AGRONOMO [10%] → DIRECTOR PROYECTO [25%]; ECONOMISTA [20%]; SOCIOLOGO [10%]; INGENIERO AGRONOMO [10%]; INGENIERO EN MEDIOAMBIENTE [10%]; ADMINISTRATIVO [10%] |
| 8 | METODOLOGIA Y PLAN DE TRABAJO | 2013-04-15 → 2013-05-06 (+21d) | 2013-04-19 → 2013-05-17 (+28d) | 5d → 10d | 7d → none | 7 → 7FS-5d, 5, 4, 6SS | resources ADMINISTRATIVO [50%]; DIRECTOR PROYECTO [50%]; ECONOMISTA; INGENIERO AGRONOMO [50%]; INGENIERO EN MEDIO AMBIENTE [50%]; SOCIOLOGO [50%] → INGENIERO AGRONOMO [50%]; DIRECTOR PROYECTO [50%]; ECONOMISTA; SOCIOLOGO [50%]; INGENIERO EN MEDIOAMBIENTE [50%]; ADMINISTRATIVO [50%] |
| 9 | DOC. Nº1: Fin P.F. | 2013-04-20 → 2013-05-20 (+30d) | 2013-04-23 → 2013-05-24 (+31d) | 3d → 5d |  |  | resources ADMINISTRATIVO; DIRECTOR PROYECTO [50%]; ECONOMISTA [50%]; INGENIERO AGRONOMO [20%]; INGENIERO EN MEDIO AMBIENTE [20%]; SOCIOLOGO [20%] → DIRECTOR PROYECTO [50%]; ECONOMISTA [50%]; SOCIOLOGO [20%]; INGENIERO EN MEDIOAMBIENTE [20%]; INGENIERO AGRONOMO [20%]; ADMINISTRATIVO |
| 10 | Entrega al PROMOTOR. Doc. nº1 | 2013-06-04 → 2013-05-27 (-8d) | 2013-06-04 → 2013-05-27 (-8d) |  |  |  |  |
| 11 | SEMINARIO DE LANZAMIENTO DEL PROYECTO | 2013-06-04 → 2013-05-27 (-8d) | 2013-06-04 → 2013-05-27 (-8d) |  | -23d → none |  | resources ADMINISTRATIVO; DIRECTOR PROYECTO; ECONOMISTA; INGENIERO AGRONOMO; INGENIERO EN MEDIO AMBIENTE; SOCIOLOGO → DIRECTOR PROYECTO; ECONOMISTA; SOCIOLOGO; INGENIERO EN MEDIOAMBIENTE; ADMINISTRATIVO; INGENIERO AGRONOMO |
| 12 | **FASE 2: ANALISIS Y DIAGNOSTICO** | 2013-05-03 → 2013-05-28 (+25d) | 2013-09-11 → 2013-09-30 (+19d) | 94d → 90d |  |  |  |
| 13 | **ANALISIS ANTECEDENTES** | 2013-05-03 → 2013-05-28 (+25d) | 2013-05-16 → 2013-06-17 (+32d) | 10d → 15d |  |  |  |
| 14 | POLITICAS Y PROGRAMAS | 2013-06-05 → 2013-05-28 (-8d) | 2013-06-18 → 2013-06-10 (-8d) |  | -23d → none |  | resources DIRECTOR PROYECTO [20%]; INGENIERO AGRONOMO [50%]; ECONOMISTA [40%]; ADMINISTRATIVO [20%]; INGENIERO EN MEDIO AMBIENTE [20%] → DIRECTOR PROYECTO [20%]; INGENIERO AGRONOMO [50%]; ECONOMISTA [40%]; ADMINISTRATIVO [20%]; INGENIERO EN MEDIOAMBIENTE [20%] |
| 15 | MARCO LEGAL | 2013-06-07 → 2013-05-28 (-10d) | 2013-06-27 → 2013-06-17 (-10d) |  |  |  |  |
| 16 | BASES DE DATOS EXISTENTES | 2013-06-28 → 2013-05-28 (-31d) | 2013-07-08 → 2013-06-05 (-33d) |  |  |  |  |
| 17 | **ANALISIS DEL AREA DEL PROYECTO** | 2013-07-09 → 2013-06-06 (-33d) | 2013-09-02 → 2013-09-25 (+23d) | 40d → 80d |  |  |  |
| 18 | ANALISIS DE RECURSOS NATURALES. INVENTARIO AMBIENTAL | 2013-10-29 → 2013-04-14 (-198d) | 2013-12-16 → 2013-05-30 (-200d) |  |  |  | resources INGENIERO EN MEDIO AMBIENTE; INGENIERO AGRONOMO [50%]; ECONOMISTA [40%]; ADMINISTRATIVO [20%]; EXPERTO GIS [50%] → INGENIERO EN MEDIOAMBIENTE; INGENIERO AGRONOMO [50%]; ECONOMISTA [40%]; ADMINISTRATIVO [20%]; EXPERTO GIS [50%] |
| 19 | INFRAESTRUCTURAS Y SERVICIOS | 2013-12-17 → 2013-05-31 (-200d) | 2014-01-13 → 2013-06-27 (-200d) |  |  |  | resources INGENIERO AGRONOMO; SOCIOLOGO [50%]; DIRECTOR PROYECTO [10%]; ADMINISTRATIVO [25%] → DIRECTOR PROYECTO [10%]; ADMINISTRATIVO [25%]; SOCIOLOGO [50%]; INGENIERO AGRONOMO |
| 20 | ANALISIS DE SECTORES PRODUCTIVOS | 2014-01-14 → 2013-06-28 (-200d) | 2014-02-17 → 2013-08-01 (-200d) |  |  |  | resources DIRECTOR PROYECTO [20%]; ECONOMISTA; ADMINISTRATIVO [50%]; INGENIERO AGRONOMO [50%] → DIRECTOR PROYECTO [20%]; ECONOMISTA; INGENIERO AGRONOMO [50%]; ADMINISTRATIVO [50%] |
| 21 | ANALISIS POBLACIONAL | 2014-06-27 → 2013-06-06 (-386d) | 2014-07-24 → 2013-07-03 (-386d) |  |  |  | resources SOCIOLOGO; INGENIERO AGRONOMO [25%]; ADMINISTRATIVO [25%] → INGENIERO AGRONOMO [25%]; ADMINISTRATIVO [25%]; SOCIOLOGO |
| 22 | SISTEMA GENERAL TERRITORIAL DE INFORMACION | 2014-07-25 → 2013-06-06 (-414d) | 2014-08-22 → 2013-07-04 (-414d) |  |  |  | resources EXPERTO GIS; ADMINISTRATIVO [25%]; INGENIERO AGRONOMO [25%]; SOCIOLOGO → INGENIERO AGRONOMO [25%]; ADMINISTRATIVO [25%]; EXPERTO GIS; SOCIOLOGO |
| 23 | **ANALISIS DE AGENTES Y PARTICIPACION** | 2014-08-23 → 2013-05-28 (-452d) | 2014-10-22 → 2013-09-18 (-399d) | 44d → 82d |  |  |  |
| 24 | IDENTIFICACIÓN DE AGENTES Y TIPOLOGIA | 2014-12-16 → 2013-06-06 (-558d) | 2014-12-29 → 2013-06-18 (-559d) | 10d → 9d |  | none → 22SS | resources DIRECTOR PROYECTO [50%]; SOCIOLOGO; INGENIERO AGRONOMO [50%]; ADMINISTRATIVO [25%] → DIRECTOR PROYECTO [50%]; INGENIERO AGRONOMO [50%]; ADMINISTRATIVO [25%]; SOCIOLOGO |
| 25 | ANALISIS DE LA PARTICIPACIÓN: ENCUESTA CON LOS AGENTES | 2014-12-31 → 2013-06-19 (-560d) | 2015-03-24 → 2013-09-03 (-567d) | 60d → 55d |  |  | resources DIRECTOR PROYECTO [50%]; SOCIOLOGO; INGENIERO AGRONOMO [50%]; ADMINISTRATIVO [25%] → DIRECTOR PROYECTO [50%]; INGENIERO AGRONOMO [50%]; ADMINISTRATIVO [25%]; SOCIOLOGO |
| 26 | TALLER DE PARTICIPACIÓN AGENTES PUBLICOS | 2015-03-26 → 2013-06-19 (-645d) | 2015-03-26 → 2013-06-19 (-645d) |  |  | none → 25SS | resources SOCIOLOGO; INGENIERO AGRONOMO [50%]; ADMINISTRATIVO [50%]; DIRECTOR PROYECTO [15%] → INGENIERO AGRONOMO [50%]; ADMINISTRATIVO [50%]; DIRECTOR PROYECTO [15%]; SOCIOLOGO |
| 27 | ANALISIS PROSPECTIVO SIN | 2015-03-27 → 2013-06-20 (-645d) | 2015-04-03 → 2013-06-27 (-645d) |  |  |  | resources INGENIERO AGRONOMO [25%]; ECONOMISTA [50%]; SOCIOLOGO [25%]; INGENIERO EN MEDIO AMBIENTE [25%]; DIRECTOR PROYECTO [15%] → INGENIERO AGRONOMO [25%]; ECONOMISTA [50%]; SOCIOLOGO [25%]; INGENIERO EN MEDIOAMBIENTE [25%]; DIRECTOR PROYECTO [15%] |
| 28 | INFORME DE PARTICIPACION: Problemas, necesidades, oportunidades | 2015-04-06 → 2013-09-04 (-579d) | 2015-04-17 → 2013-09-16 (-578d) | 10d → 9d |  |  | resources DIRECTOR PROYECTO [30%]; INGENIERO AGRONOMO [25%]; ECONOMISTA [50%]; SOCIOLOGO [25%]; INGENIERO EN MEDIO AMBIENTE [25%]; ADMINISTRATIVO [50%] → DIRECTOR PROYECTO [30%]; INGENIERO AGRONOMO [25%]; ECONOMISTA [50%]; SOCIOLOGO [25%]; INGENIERO EN MEDIOAMBIENTE [25%]; ADMINISTRATIVO [50%] |
| 29 | PRESENTACIÓN Y VALIDACION DE CONCLUSIONES | 2015-04-20 → 2013-09-17 (-580d) | 2015-04-21 → 2013-09-18 (-580d) |  |  |  |  |
| 30 | CONCLUSIONES Y Doc. Nº2. Presentación al PROMOTOR | 2015-04-22 → 2013-09-30 (-569d) | 2015-04-22 → 2013-09-30 (-569d) |  |  |  | resources DIRECTOR PROYECTO [50%]; INGENIERO AGRONOMO [25%]; ADMINISTRATIVO; ECONOMISTA [50%]; INGENIERO EN MEDIO AMBIENTE [20%] → DIRECTOR PROYECTO [50%]; INGENIERO AGRONOMO [25%]; ADMINISTRATIVO; ECONOMISTA [50%]; INGENIERO EN MEDIOAMBIENTE [20%] |
| 31 | Doc. nº2. REVISIÓN POR EL PROMOTOR | 2015-04-22 → 2013-09-30 (-569d) | 2015-04-22 → 2013-09-30 (-569d) |  |  |  |  |
| 32 | **FASE 3: DISEÑO DEL PROYECTO** | 2015-04-22 → 2013-10-01 (-568d) | 2015-08-27 → 2014-02-05 (-568d) |  | 0d → none |  |  |
| 33 | OBJETIVOS Y METAS | 2015-04-22 → 2013-10-01 (-568d) | 2015-04-22 → 2013-10-01 (-568d) |  |  |  |  |
| 34 | ALTERNATIVA ESTRATEGICAS: ANÁLISIS Y SELECCIÓN | 2015-04-23 → 2013-10-02 (-568d) | 2015-05-01 → 2013-10-10 (-568d) |  |  |  | resources INGENIERO AGRONOMO; ECONOMISTA; DIRECTOR PROYECTO [50%]; INGENIERO EN MEDIO AMBIENTE [50%] → DIRECTOR PROYECTO [50%]; INGENIERO AGRONOMO; ECONOMISTA; INGENIERO EN MEDIOAMBIENTE [50%] |
| 35 | FORMULACION DE LOS COMPONENTES | 2015-05-04 → 2013-10-11 (-570d) | 2015-07-24 → 2014-01-02 (-568d) |  |  |  | resources INGENIERO AGRONOMO [50%]; ECONOMISTA [50%]; INGENIERO EN MEDIO AMBIENTE [50%] → INGENIERO AGRONOMO [50%]; ECONOMISTA [50%]; INGENIERO EN MEDIOAMBIENTE [50%] |
| 36 | DISEÑO DE LA ORGANIZACIÓN | 2015-07-27 → 2014-01-03 (-570d) | 2015-08-07 → 2014-01-16 (-568d) |  |  |  | resources INGENIERO AGRONOMO [50%]; INGENIERO EN MEDIO AMBIENTE [50%]; ECONOMISTA [50%] → INGENIERO AGRONOMO [50%]; ECONOMISTA [50%]; INGENIERO EN MEDIOAMBIENTE [50%] |
| 37 | SISTEMA DE SEGUIMIENTO Y EVALUACION. Programación de la ejecución. | 2015-08-10 → 2014-01-17 (-570d) | 2015-08-18 → 2014-01-27 (-568d) |  |  |  | resources ECONOMISTA [50%]; INGENIERO AGRONOMO [50%]; INGENIERO EN MEDIO AMBIENTE [50%] → INGENIERO AGRONOMO [50%]; ECONOMISTA [50%]; INGENIERO EN MEDIOAMBIENTE [50%] |
| 38 | PRESUPUESTACION | 2015-08-10 → 2014-01-17 (-570d) | 2015-08-13 → 2014-01-22 (-568d) |  |  |  | resources ECONOMISTA [50%]; INGENIERO AGRONOMO [50%]; INGENIERO EN MEDIO AMBIENTE [50%] → INGENIERO AGRONOMO [50%]; ECONOMISTA [50%]; INGENIERO EN MEDIOAMBIENTE [50%] |
| 39 | Doc. Nº 3. Entrega al PROMOTOR | 2015-08-14 → 2014-01-23 (-568d) | 2015-08-14 → 2014-01-23 (-568d) |  |  |  |  |
| 40 | Doc. Nº 3. REVISION POR EL PROMOTOR | 2015-08-14 → 2014-01-23 (-568d) | 2015-08-27 → 2014-02-05 (-568d) |  |  |  |  |
| 41 | **FASE 4: EVALUACION MULTICRITERIO** | 2015-08-28 → 2014-02-06 (-568d) | 2015-09-17 → 2014-02-26 (-568d) |  | 0d → none |  |  |
| 42 | EVALUACION ECONOMICO-FINANCIERA | 2015-08-28 → 2014-02-06 (-568d) | 2015-09-10 → 2014-02-19 (-568d) |  |  |  |  |
| 43 | EVALUACION SOCIAL Y CULTURAL | 2015-08-28 → 2014-02-06 (-568d) | 2015-09-10 → 2014-02-19 (-568d) |  |  |  |  |
| 44 | EVALUACION AMBIENTAL | 2015-08-28 → 2014-02-06 (-568d) | 2015-09-10 → 2014-02-19 (-568d) |  |  |  | resources DIRECTOR PROYECTO [25%]; INGENIERO AGRONOMO [50%]; ECONOMISTA [15%]; SOCIOLOGO → DIRECTOR PROYECTO [25%]; INGENIERO AGRONOMO [50%]; ECONOMISTA [15%]; INGENIERO EN MEDIOAMBIENTE |
| 45 | EVALUACION DE RIESGOS, SEGURIDAD Y SALUD DEL PROYECTO | 2015-08-28 → 2014-02-06 (-568d) | 2015-09-10 → 2014-02-19 (-568d) |  |  |  | resources TECNICOS DE APOYO; DIRECTOR PROYECTO [25%]; INGENIERO AGRONOMO [50%]; ECONOMISTA [15%] → DIRECTOR PROYECTO [25%]; INGENIERO AGRONOMO [50%]; ECONOMISTA [15%]; TECNICOS DE APOYO |
| 46 | Entrega Doc. nº 4. VIABILIDAD Y SOSTENIBLIDAD | 2015-09-11 → 2014-02-20 (-568d) | 2015-09-11 → 2014-02-20 (-568d) |  |  |  |  |
| 47 | Revisión Doc. nº 4 | 2015-09-11 → 2014-02-20 (-568d) | 2015-09-17 → 2014-02-26 (-568d) |  |  |  |  |
| 49 | MEMORIA | 2015-09-18 → 2014-02-27 (-568d) | 2015-09-25 → 2014-03-06 (-568d) |  |  |  |  |
| 50 | ANEJOS A LA MEMORIA | 2015-09-18 → 2014-02-27 (-568d) | 2015-10-01 → 2014-03-12 (-568d) |  |  |  | resources INGENIERO AGRONOMO [50%]; ECONOMISTA [25%]; DIRECTOR PROYECTO [10%]; INGENIERO EN MEDIO AMBIENTE [50%]; ADMINISTRATIVO [50%]; TECNICOS DE APOYO → INGENIERO AGRONOMO [50%]; ECONOMISTA [25%]; DIRECTOR PROYECTO [10%]; INGENIERO EN MEDIOAMBIENTE [50%]; ADMINISTRATIVO [50%]; TECNICOS DE APOYO |
| 51 | PLANOS | 2015-09-18 → 2014-02-27 (-568d) | 2015-10-01 → 2014-03-12 (-568d) |  |  |  | resources ADMINISTRATIVO [50%]; DIRECTOR PROYECTO [10%]; ECONOMISTA [25%]; EXPERTO GIS; INGENIERO AGRONOMO [50%]; INGENIERO EN MEDIO AMBIENTE [50%]; TECNICOS DE APOYO → INGENIERO AGRONOMO [50%]; ECONOMISTA [25%]; DIRECTOR PROYECTO [10%]; INGENIERO EN MEDIOAMBIENTE [50%]; ADMINISTRATIVO [50%]; EXPERTO GIS; TECNICOS DE APOYO |
| 52 | PLIEGO DE CONDICIONES | 2015-09-18 → 2014-02-27 (-568d) | 2015-09-22 → 2014-03-03 (-568d) |  |  |  | resources DIRECTOR PROYECTO [10%]; INGENIERO AGRONOMO [50%]; ECONOMISTA [25%]; ADMINISTRATIVO [50%]; INGENIERO EN MEDIO AMBIENTE [50%]; TECNICOS DE APOYO → INGENIERO AGRONOMO [50%]; ECONOMISTA [25%]; DIRECTOR PROYECTO [10%]; INGENIERO EN MEDIOAMBIENTE [50%]; ADMINISTRATIVO [50%]; TECNICOS DE APOYO |
| 53 | PRESUPUESTO | 2015-09-18 → 2014-02-27 (-568d) | 2015-09-22 → 2014-03-03 (-568d) |  |  |  | resources ADMINISTRATIVO [50%]; DIRECTOR PROYECTO [10%]; ECONOMISTA [25%]; INGENIERO AGRONOMO [50%]; INGENIERO EN MEDIO AMBIENTE [50%]; TECNICOS DE APOYO → ECONOMISTA [25%]; INGENIERO AGRONOMO [50%]; DIRECTOR PROYECTO [10%]; INGENIERO EN MEDIOAMBIENTE [50%]; ADMINISTRATIVO [50%]; TECNICOS DE APOYO |
| 54 | ESTUDIO DE SEGURIDAD Y SALUD | 2015-09-18 → 2014-02-27 (-568d) | 2015-10-01 → 2014-03-12 (-568d) |  |  |  | resources ADMINISTRATIVO [50%]; DIRECTOR PROYECTO [10%]; ECONOMISTA [25%]; INGENIERO AGRONOMO [50%]; INGENIERO EN MEDIO AMBIENTE [50%]; TECNICOS DE APOYO → INGENIERO AGRONOMO [50%]; ECONOMISTA [25%]; DIRECTOR PROYECTO [10%]; INGENIERO EN MEDIOAMBIENTE [50%]; ADMINISTRATIVO [50%]; TECNICOS DE APOYO |
| 55 | Entrega del proyecto | 2015-10-02 → 2014-03-12 (-569d) | 2015-10-02 → 2014-03-12 (-569d) |  |  |  |  |
